# Assignment 2

Schedule from MS Project, 2018-10-15 to 2019-03-15.

## Calendars

- Standard: Mon-Fri 08:00-12:00, 13:00-17:00; Sat-Sun off.

## Resources

| Resource |
| --- |
| Project Manager 7 |
| Requirement Engineer 76 |
| Requirement Engineer 8 |
| Requirement Engineer 9 |
| Requirement Engineer 10 |
| Requirement Engineer 11 |
| Requirement Engineer 12 |
| System Engineer 1 |
| System Engineer 2 |
| System Engineer 3 |
| System Engineer 4 |
| System Engineer 5 |
| System Engineer 6 |
| System Engineer 7 |
| System Engineer 8 |
| System Engineer 9 |
| Programmer/Software Engineer 27 |
| Programmer/Software Engineer 28 |
| Programmer/Software Engineer 29 |
| Programmer/Software Engineer 213 |
| Programmer/Software Engineer 214 |
| Programmer/Software Engineer 215 |
| Programmer/Software Engineer 216 |
| Test Engineer 47 |
| Test Engineer 48 |
| Test Engineer 49 |
| Test Engineer 193 |
| Test Engineer 194 |
| Test Engineer 195 |
| Test Engineer 196 |
| Documentation Engineer 44 |
| Documentation Engineer 45 |
| Documentation Engineer 47 |
| Documentation Engineer 48 |
| Resource Engineer 215 |

## Schedule

| ID | WBS | Task | Duration | Start | Finish | Predecessors | Total slack | Free slack | Resources | Work |
| --- | --- | --- | --- | --- | --- | --- | --- | --- | --- | --- |
| 1 | 1 | **Assignment2** | 109.42d | 2018-10-15 | 2019-03-15 |  | 0d |  |  | 4494.24h |
| 2 | 1.1 | **Project Plan** | 12.37d | 2018-10-15 | 2018-10-31 |  | 0d |  |  | 140.24h |
| 3 | 1.1.1 | Write Plan | 7.5d | 2018-10-15 | 2018-10-24 |  | 0d |  | Project Manager 7 | 60h |
| 4 | 1.1.2 | **Review Plan** | 1.57d | 2018-10-24 | 2018-10-26 | 3 | 0d |  |  | 53.84h |
| 5 | 1.1.2.1 | Preparation for review | 1.12d | 2018-10-24 | 2018-10-25 |  | 0d |  | Programmer/Software Engineer 216; Requirement Engineer 76; Resource Engineer 215; System Engineer 9 | 35.84h |
| 6 | 1.1.2.2 | Review Meeting | 0.45d | 2018-10-25 | 2018-10-26 | 5 | 0d |  | Programmer/Software Engineer 216; Project Manager 7; Requirement Engineer 76; Resource Engineer 215; System Engineer 9 | 18h |
| 7 | 1.1.3 | Rework | 3.3d | 2018-10-26 | 2018-10-31 | 4 | 0d |  | Project Manager 7 | 26.4h |
| 8 | 1.2 | **Requirement** | 6.82d | 2018-10-31 | 2018-11-09 | 2 | 0d |  |  | 163.68h |
| 9 | 1.2.1 | Write requirements | 2.31d | 2018-10-31 | 2018-11-02 |  | 0d |  | Requirement Engineer 10; Requirement Engineer 11; Requirement Engineer 12 | 55.36h |
| 10 | 1.2.2 | **Review Requirements** | 3.89d | 2018-11-02 | 2018-11-08 | 9 | 0d |  |  | 88.48h |
| 11 | 1.2.2.1 | Preparation for review | 1.73d | 2018-11-02 | 2018-11-06 |  | 0d |  | Requirement Engineer 10; Requirement Engineer 11; Requirement Engineer 12; Requirement Engineer 76 | 55.36h |
| 12 | 1.2.2.2 | Review Meeting | 1.38d | 2018-11-06 | 2018-11-08 | 11 | 0d |  | Project Manager 7; Requirement Engineer 10; Requirement Engineer 11; Requirement Engineer 12; Requirement Engineer 76; Requirement Engineer 9 | 33.12h |
| 13 | 1.2.3 | Rework | 0.62d | 2018-11-08 | 2018-11-09 | 10 | 0d |  | Requirement Engineer 10; Requirement Engineer 11; Requirement Engineer 12; Requirement Engineer 76 | 19.84h |
| 14 | 1.3 | **Lab and Environment Setup** | 12.69d | 2018-11-01 | 2018-11-19 | 7 | 83.49d |  |  | 177.68h |
| 15 | 1.3.1 | **Hardware** | 10.76d | 2018-11-01 | 2018-11-16 |  | 83.49d | 0d |  | 126.72h |
| 16 | 1.3.1.1 | Install Server | 3.86d | 2018-11-01 | 2018-11-13 |  | 83.49d | 0d | System Engineer 5; System Engineer 1; System Engineer 2; System Engineer 3; System Engineer 4 | 99.52h |
| 17 | 1.3.1.2 | Install Clients | 2.12d | 2018-11-13 | 2018-11-16 | 16 | 83.49d |  | System Engineer 6; System Engineer 7; System Engineer 8; System Engineer 9 | 27.2h |
| 18 | 1.3.2 | **Software** | 1.93d | 2018-11-16 | 2018-11-19 | 15 | 83.49d |  |  | 50.96h |
| 19 | 1.3.2.1 | Install Development Tools | 0.81d | 2018-11-16 | 2018-11-16 |  | 83.49d | 0d | System Engineer 1; System Engineer 2; System Engineer 3; System Engineer 4 | 15.12h |
| 20 | 1.3.2.2 | Install Testing Tools | 1.12d | 2018-11-16 | 2018-11-19 | 19 | 83.49d |  | System Engineer 6; System Engineer 7; System Engineer 8; System Engineer 9 | 35.84h |
| 21 | 1.4 | **Analysis/Design Document** | 2.7d | 2018-11-09 | 2018-11-13 | 13 | 0d |  |  | 80.72h |
| 22 | 1.4.1 | Write DD | 0.74d | 2018-11-09 | 2018-11-09 | 13 | 0d |  | System Engineer 6; System Engineer 7; System Engineer 8; System Engineer 9 | 23.68h |
| 23 | 1.4.2 | **Review DD** | 1.28d | 2018-11-09 | 2018-11-13 | 22 | 0d |  |  | 35.28h |
| 24 | 1.4.2.1 | Preparation for DD | 0.99d | 2018-11-09 | 2018-11-12 |  | 0d |  | System Engineer 6; System Engineer 7; System Engineer 8 | 23.68h |
| 25 | 1.4.2.2 | Review Meeting | 0.29d | 2018-11-12 | 2018-11-13 | 24 | 0d |  | System Engineer 6; System Engineer 7; System Engineer 8; System Engineer 9; Project Manager 7 | 11.6h |
| 26 | 1.4.3 | Rework | 0.68d | 2018-11-13 | 2018-11-13 | 23 | 0d |  | System Engineer 6; System Engineer 7; System Engineer 8; System Engineer 9 | 21.76h |

| ID | WBS | Task | Duration | Start | Finish | Predecessors | Total slack | Free slack | Resources | Work |
| --- | --- | --- | --- | --- | --- | --- | --- | --- | --- | --- |
| 27 | 1.5 | **Data Model** | 9.96d | 2018-11-13 | 2018-11-27 | 21 | 77.58d |  |  | 84.64h |
| 28 | 1.5.1 | Create Data Model | 1.52d | 2018-11-13 | 2018-11-23 |  | 77.58d | 0d | System Engineer 1; System Engineer 2; System Engineer 3; System Engineer 6; System Engineer 7 | 28.48h |
| 29 | 1.5.2 | **Review Data Model** | 2.08d | 2018-11-23 | 2018-11-27 | 28 | 77.58d | 0d |  | 52.88h |
| 30 | 1.5.2.1 | Preparation for DM | 1.89d | 2018-11-23 | 2018-11-27 |  | 77.58d | 0d | Requirement Engineer 9; Requirement Engineer 10; Requirement Engineer 11 | 45.44h |
| 31 | 1.5.2.2 | Review Meeting | 0.19d | 2018-11-27 | 2018-11-27 | 30 | 77.58d |  | Requirement Engineer 8; Requirement Engineer 9; Requirement Engineer 10; System Engineer 6; Project Manager 7 | 7.44h |
| 32 | 1.5.3 | Rework | 0.41d | 2018-11-27 | 2018-11-27 | 29 | 77.58d |  | System Engineer 1; System Engineer 2; System Engineer 3; System Engineer 4; System Engineer 6 | 3.28h |
| 33 | 1.6 | **Coding and unit test** | 75.24d | 2018-11-13 | 2019-02-27 | 26 | 0d |  |  | 2840.32h |
| 34 | 1.6.1 | Write Code | 34.3d | 2018-11-13 | 2019-01-01 | 26 | 0d |  | Programmer/Software Engineer 29; Programmer/Software Engineer 213; Programmer/Software Engineer 214; Programmer/Software Engineer 215; Programmer/Software Engineer 216 | 1372h |
| 35 | 1.6.2 | **Unit Testing** | 35.26d | 2019-01-01 | 2019-02-19 | 34 | 0d |  |  | 1238.4h |
| 36 | 1.6.2.1 | Prepare/Execute Test Cases | 12.9d | 2019-01-01 | 2019-01-18 |  | 0d |  | Programmer/Software Engineer 213; Programmer/Software Engineer 214; Programmer/Software Engineer 215; Programmer/Software Engineer 216 | 412.8h |
| 37 | 1.6.2.2 | Fix Found Defects | 13.76d | 2019-01-18 | 2019-02-06 | 36 | 0d |  | Programmer/Software Engineer 27; Programmer/Software Engineer 28; Programmer/Software Engineer 29; Programmer/Software Engineer 213; Programmer/Software Engineer 214 | 550.4h |
| 38 | 1.6.2.3 | Test Fixed Defects | 8.6d | 2019-02-06 | 2019-02-19 | 37 | 0d |  | Programmer/Software Engineer 27; Programmer/Software Engineer 28; Programmer/Software Engineer 214; Programmer/Software Engineer 215 | 275.2h |
| 39 | 1.6.3 | **Code Inspection** | 5.68d | 2019-02-19 | 2019-02-27 | 35 | 0d |  |  | 229.92h |
| 40 | 1.6.3.1 | Preparation for Code Inspection | 2.14d | 2019-02-19 | 2019-02-21 |  | 0d |  | Programmer/Software Engineer 29; Programmer/Software Engineer 213; Programmer/Software Engineer 214; Programmer/Software Engineer 215 | 68.48h |
| 41 | 1.6.3.2 | Code Inspection Meeting | 1.37d | 2019-02-21 | 2019-02-22 | 40 | 0d |  | Programmer/Software Engineer 213; Programmer/Software Engineer 214; Programmer/Software Engineer 215; Programmer/Software Engineer 216; Project Manager 7 | 39.92h |
| 42 | 1.6.3.3 | Rework | 2.17d | 2019-02-22 | 2019-02-27 | 41 | 0d |  | Programmer/Software Engineer 27; Programmer/Software Engineer 28; Programmer/Software Engineer 29; Programmer/Software Engineer 213; Programmer/Software Engineer 214; Programmer/Software Engineer 215; Programmer/Software Engineer 216 | 121.52h |
| 43 | 1.7 | **Testing** | 90.24d | 2018-11-09 | 2019-03-15 | 13 | 0d |  |  | 906.8h |
| 44 | 1.7.1 | Write test plan | 6.05d | 2018-11-09 | 2018-11-21 | 13 | 79.68d | 0d | Test Engineer 47; Test Engineer 48; Test Engineer 49; Test Engineer 193; Test Engineer 194; Test Engineer 195; Test Engineer 196 | 336h |
| 45 | 1.7.2 | **Review TP** | 2.4d | 2018-11-21 | 2018-11-23 | 44 | 79.68d |  |  | 78.8h |
| 46 | 1.7.2.1 | Preparation for TP | 1.31d | 2018-11-21 | 2018-11-22 |  | 79.68d | 0d | Test Engineer 193; Test Engineer 194; Test Engineer 195; Test Engineer 196 | 41.92h |
| 47 | 1.7.2.2 | Review TP Meeting | 0.52d | 2018-11-22 | 2018-11-23 | 46 | 79.68d | 0d | Project Manager 7; Test Engineer 48; Test Engineer 49; Test Engineer 193; Test Engineer 194 | 18.64h |
| 48 | 1.7.2.3 | Rework | 0.57d | 2018-11-23 | 2018-11-23 | 47 | 79.68d |  | Test Engineer 48; Test Engineer 49; Test Engineer 193; Test Engineer 194 | 18.24h |
| 49 | 1.7.3 | Execute TP | 7.25d | 2019-02-27 | 2019-03-08 | 42 | 0d |  | Test Engineer 47; Test Engineer 48; Test Engineer 49; Test Engineer 195; Test Engineer 196 | 290h |
| 50 | 1.7.4 | Fix Found Defects | 5.05d | 2019-03-08 | 2019-03-15 | 49 | 0d |  | Test Engineer 48; Test Engineer 49; Test Engineer 193; Test Engineer 194; Test Engineer 195 | 202h |

| ID | WBS | Task | Duration | Start | Finish | Predecessors | Total slack | Free slack | Resources | Work |
| --- | --- | --- | --- | --- | --- | --- | --- | --- | --- | --- |
| 51 | 1.8 | **Documentation** | 16.53d | 2018-11-09 | 2018-12-03 | 13 | 73.71d |  |  | 100.16h |
| 52 | 1.8.1 | User Documentation | 1.61d | 2018-11-09 | 2018-11-22 | 13 | 73.71d | 0d | Documentation Engineer 44; Documentation Engineer 45; Documentation Engineer 47; Documentation Engineer 48 | 28.88h |
| 53 | 1.8.2 | **Review UD** | 7.38d | 2018-11-22 | 2018-12-03 | 52 | 73.71d |  |  | 71.28h |
| 54 | 1.8.2.1 | Preparation for UD | 1.93d | 2018-11-22 | 2018-11-29 |  | 73.71d | 0d | Documentation Engineer 45; Documentation Engineer 47; Documentation Engineer 48; Documentation Engineer 44 | 27.44h |
| 55 | 1.8.2.2 | Review UD Meeting | 0.77d | 2018-11-29 | 2018-11-30 | 54 | 73.71d | 0d | Documentation Engineer 45; Documentation Engineer 47; Documentation Engineer 48; Project Manager 7 | 21.04h |
| 56 | 1.8.2.3 | Rework | 0.95d | 2018-11-30 | 2018-12-03 | 55 | 73.71d |  | Documentation Engineer 45; Documentation Engineer 47; Documentation Engineer 48 | 22.8h |
